# SD17-V1研发计划

Schedule from a web Gantt chart, 2025-06-25 to 2025-08-04.
Saturdays and Sundays are off

## Schedule

| ID | WBS | Task | Duration | Start | Finish | Predecessors | Status |
| --- | --- | --- | --- | --- | --- | --- | --- |
| 2 | 1 | **结构设计** | 29d | 2025-06-25 | 2025-08-04 |  |  |
| 3 | 1.1 | ID+结构堆叠 | 1d | 2025-06-25 | 2025-06-25 |  |  |
| 4 | 1.2 | 结构评审和修改 | 1d | 2025-06-25 | 2025-06-25 |  |  |
| 5 | 1.3 | 第一阶段结构细化评审 | 1d | 2025-06-25 | 2025-06-25 |  |  |
| 6 | 1.4 | 供应商预选 | 1d | 2025-06-25 | 2025-06-25 |  |  |
| 7 | 1.5 | 第二阶段结构细化和评审 | 1d | 2025-06-25 | 2025-06-25 |  |  |
| 8 | 1.6 | **DFM修改和评审** | 29d | 2025-06-25 | 2025-08-04 |  |  |
| 9 | 1.6.1 | 供应商输出DFM | 14d | 2025-06-25 | 2025-07-14 |  |  |
| 10 | 1.6.2 | DFM评审 | 7d | 2025-07-15 | 2025-07-23 | 9 | waiting |
| 11 | 1.6.3 | DFM修改确认 | 8d | 2025-07-24 | 2025-08-04 | 10 | waiting |
| 12 | 1.6.4 | 正式T0投模 | 8d | 2025-06-25 | 2025-07-04 |  |  |
| 13 | 2 | 结构修模 | 6d | 2025-06-25 | 2025-07-02 |  |  |
